# Simple Project Plan

How a schedule from MS Project changed from version to version. A marks actual dates.

## Version 1 (saved 2015-09-08)

Note of the change: Uploaded Microsoft Project File

| ID | WBS | Task | Duration | Start | Finish | Predecessors | Complete | Total float | Constraint |
| --- | --- | --- | --- | --- | --- | --- | --- | --- | --- |
| 1 | 1 | **System Design** | 88d | 2015-05-14 A | 2015-09-14 |  | 55% |  | as late as possible |
| 2 |  | General Planning | 26d | 2015-05-14 A | 2015-06-18 A |  | 100% |  |  |
| 3 |  | Complete I2S In Document | 60d | 2015-06-18 A | 2015-09-09 A |  | 100% |  |  |
| 4 |  | Complete I2S Out Document | 44d | 2015-07-11 A | 2015-09-09 |  | 40% |  |  |
| 5 |  | Complete Filter Document | 60d | 2015-06-18 A | 2015-09-09 |  | 40% |  |  |
| 6 |  | Complete I2C Document | 60d | 2015-06-18 A | 2015-09-09 |  | 50% |  |  |
| 7 |  | Complete Register Document | 60d | 2015-06-18 A | 2015-09-09 |  | 10% |  |  |
| 8 |  | Finish System Design | 0d | 2015-09-09 A | 2015-09-09 |  | 70% |  |  |
| 9 |  | Document System in CORE | 60d | 2015-06-18 A | 2015-09-09 |  | 70% |  |  |
| 10 |  | RTS/RTR and XFC Protocols | 7d | 2015-09-08 | 2015-09-16 |  |  |  | as late as possible |
| 11 |  | Create a Detailed Schedule | 9d | 2015-09-02 A | 2015-09-14 |  | 67% |  |  |
| 12 |  | Install Microsoft Project | 9d | 2015-09-02 A | 2015-09-14 |  | 25% |  | as late as possible |
| 13 | 4 | **Install EDA Tools** | 11d | 2015-09-02 | 2015-09-16 |  |  |  | as late as possible |
| 14 |  | Determine EDA Requriments | 4d | 2015-09-02 | 2015-09-06 |  |  |  |  |
| 15 |  | Install OS | 3d | 2015-09-07 | 2015-09-09 | 14 |  |  |  |
| 16 |  | Install EDA Tool | 2d | 2015-09-10 | 2015-09-11 | 15 |  |  |  |
| 17 |  | Create a Simple Test Case | 2d | 2015-09-12 | 2015-09-14 | 16 |  |  |  |
| 18 |  | Place and Route Test | 2d | 2015-09-15 | 2015-09-16 | 17 |  |  |  |
| 19 |  | Finish EDA Installation | 0d | 2015-09-16 | 2015-09-16 |  |  |  |  |
| 20 |  | Create Web Page | 8d | 2015-09-23 | 2015-10-02 |  |  |  | as late as possible |
| 21 | 6 | **RTL Design** | 38d | 2015-09-10 A | 2015-10-31 | 1 | 2% |  | as late as possible |
| 22 | 6.1 | **Create i2si.v** | 38d | 2015-09-10 A | 2015-10-31 |  | 10% |  | as late as possible |
| 23 |  | Create i2si_fifo.v | 7d | 2015-09-10 A | 2015-09-18 |  | 70% |  |  |
| 24 |  | Create i2si_deserializer.v | 11d | 2015-09-16 | 2015-09-30 |  |  |  |  |
| 25 |  | Create i2si_bist.v | 16d | 2015-09-23 | 2015-10-14 |  |  |  |  |
| 26 |  | Create i2si.v Top-Level | 13d | 2015-10-15 | 2015-10-31 | 23, 24, 25 |  |  | as late as possible |
| 27 | 6.2 | **Create i2so.v** | 33d | 2015-09-10 | 2015-10-24 |  |  |  | as late as possible |
| 28 |  | Create i2so_fifo.v | 10d | 2015-09-10 | 2015-09-23 |  |  |  |  |
| 29 |  | Create i2so_serializer.v | 16d | 2015-09-16 | 2015-10-07 |  |  |  | finish no later than 2015-10-07 |
| 30 |  | Create i2so.v Top-Level | 13d | 2015-10-08 | 2015-10-24 | 28, 29 |  |  | as late as possible |
| 31 | 6.3 | **Create filter.v** | 37d | 2015-09-10 | 2015-10-31 |  |  | 0d | as late as possible |
| 32 |  | Creater filter_convolution.v | 10d | 2015-09-10 | 2015-09-23 |  |  |  | as late as possible |
| 33 |  | Create filter_accumulator.v | 11d | 2015-09-16 | 2015-09-30 |  |  |  | as late as possible |
| 34 |  | Create filter_fifo.v | 11d | 2015-09-23 | 2015-10-07 |  |  |  | as late as possible |
| 35 |  | Creater filter_round_shift_clip.v | 11d | 2015-09-30 | 2015-10-14 |  |  |  | as late as possible |
| 36 |  | Create filter.v Top-Level | 13d | 2015-10-15 | 2015-10-31 | 32, 33, 34, 35 |  |  | as late as possible |
| 37 | 6.4 | **Create register.v** | 37d | 2015-09-10 | 2015-10-30 |  |  |  | as late as possible |
| 38 |  | Create register_trig_gen.v | 15d | 2015-09-10 | 2015-09-30 |  |  |  | as late as possible |
| 39 |  | Create register.v Top-Level | 22d | 2015-10-01 | 2015-10-30 | 38 |  |  | as late as possible |
| 40 | 6.5 | **Create i2c_slave.v** | 37d | 2015-09-10 | 2015-10-30 |  |  |  | as late as possible |
| 41 |  | Create i2c_slave_deserializer.v | 10d | 2015-09-10 | 2015-09-23 |  |  |  | as late as possible |
| 42 |  | Create i2c_slave_serializer.v | 11d | 2015-09-16 | 2015-09-30 |  |  |  | as late as possible |
| 43 |  | Create i2c_slave.v Buffer | 11d | 2015-09-23 | 2015-10-07 |  |  |  | as late as possible |
| 44 |  | Create i2c_slave.v Write to Register | 11d | 2015-09-30 | 2015-10-14 |  |  |  | as late as possible |
| 45 |  | Create i2c_slave.v Read from Register | 11d | 2015-10-07 | 2015-10-21 |  |  |  | as late as possible |
| 46 |  | Create i2c_slave.v Top-Level | 7d | 2015-10-22 | 2015-10-30 | 41, 42, 43, 44, 45 |  |  | as late as possible |
| 47 |  | Create chip.v | 33d | 2015-09-16 | 2015-10-30 |  |  |  |  |
| 48 |  | Finish RTL Design | 0d | 2015-10-31 | 2015-10-31 |  |  |  |  |
| 49 |  | Create Text Fixtures | 23d | 2015-09-30 | 2015-10-30 |  |  |  | as late as possible |
| 50 |  | Logic Synthesis | 8d | 2015-11-01 | 2015-11-10 | 21 |  |  | finish no later than 2015-11-10 |
| 51 |  | Floor Planning | 6d | 2015-11-11 | 2015-11-18 | 50 |  |  | as late as possible |
| 52 |  | Place and Route Gates | 5d | 2015-11-19 | 2015-11-25 | 51 |  |  | finish no later than 2015-11-25 |
| 53 | 11 | **Board Design** | 26d | 2015-10-21 | 2015-11-25 |  |  |  | as late as possible |
| 54 |  | Research FPGA's | 5d | 2015-10-21 | 2015-10-27 |  |  |  | as late as possible |
| 55 |  | Purchase FPGA | 2d | 2015-10-28 | 2015-10-29 | 54 |  |  |  |
| 56 |  | Write Microcontroller Code | 16d | 2015-10-28 | 2015-11-18 |  |  |  | as late as possible |
| 57 |  | Link Board and FPGA | 6d | 2015-11-18 | 2015-11-25 |  |  |  | as late as possible |
| 58 |  | Have a Functional FPGA | 0d | 2015-12-02 | 2015-12-02 |  |  |  |  |
| 59 |  | Write Final Report and Presentation | 5d | 2015-11-26 | 2015-12-02 |  |  |  | as late as possible |
| 60 |  | Verification | 1d | 2016-05-06 | 2016-05-06 |  |  |  | finish no earlier than 2015-05-14 |
| 61 |  | MOSIS Fabrication Deadline | 0d | 2016-03-06 | 2016-03-06 |  |  |  | as late as possible |

## Version 2 (saved 2015-09-21)

Note of the change: Updated Schedule and RTR/RTS Protocols

Last finish stays 2016-05-06. Complete tasks 2 → 13.

Added:

| ID | Task | Duration | Start | Finish | Predecessors | Constraint | Resources |
| --- | --- | --- | --- | --- | --- | --- | --- |
| 27 | Test i2si.v | 8d | 2015-10-22 | 2015-10-31 | 26 | as late as possible | Kevin Cao; Zach Nelson |
| 32 | Test i2so.v | 8d | 2015-10-22 | 2015-10-31 | 31 | as late as possible | Kevin Cao; Zach Nelson |
| 39 | Test filter.v | 8d | 2015-10-22 | 2015-10-31 |  | as late as possible | Dhruvit Naik |
| 43 | Test register.v | 13d | 2015-10-15 | 2015-10-31 |  | as late as possible | Julie Swift |
| 54 | Integration Testing | 8d | 2015-11-01 | 2015-11-10 | 52 | as late as possible |  |

Changed:

| ID | Task | Start | Finish | Duration | Complete | Total float | Predecessors | Other |
| --- | --- | --- | --- | --- | --- | --- | --- | --- |
| 1 | **System Design** |  |  |  | 55% → 99% |  |  |  |
| 4 | Complete I2S Out Document |  | 2015-09-09 A |  | 40% → 100% |  |  |  |
| 5 | Complete Filter Document |  | 2015-09-09 A |  | 40% → 100% |  |  |  |
| 6 | Complete I2C Document |  | 2015-09-09 A |  | 50% → 100% |  |  |  |
| 7 | Complete Register Document |  | 2015-09-09 A |  | 10% → 100% |  |  |  |
| 8 | Finish System Design |  | 2015-09-09 A |  | 70% → 100% |  |  |  |
| 9 | Document System in CORE |  | 2015-09-09 A |  | 70% → 100% |  |  |  |
| 10 | RTS/RTR and XFC Protocols | 2015-09-08 A |  |  | 0% → 70% |  |  |  |
| 11 | Create a Detailed Schedule |  | 2015-09-14 A |  | 67% → 100% |  |  |  |
| 12 | Install Microsoft Project |  | 2015-09-14 A |  | 25% → 100% |  |  |  |
| 13 | **Install EDA Tools** | 2015-09-02 A |  |  | 0% → 27% |  |  |  |
| 14 | Determine EDA Requriments | 2015-09-02 A | 2015-09-06 A |  | 0% → 100% |  |  |  |
| 15 | Install OS | 2015-09-07 → 2015-09-09 A (+2d) | 2015-09-09 → 2015-09-23 (+14d) | 3d → 11d | 0% → 25% |  |  |  |
| 16 | Install EDA Tool | 2015-09-10 → 2015-09-24 (+14d) | 2015-09-11 → 2015-09-28 (+17d) | 2d → 3d |  |  |  |  |
| 17 | Create a Simple Test Case | 2015-09-12 → 2015-09-29 (+17d) | 2015-09-14 → 2015-10-05 (+21d) | 2d → 5d |  |  |  |  |
| 18 | Place and Route Test | 2015-09-15 → 2015-10-06 (+21d) | 2015-09-16 → 2015-10-07 (+21d) |  |  |  |  |  |
| 19 | Finish EDA Installation | 2015-09-16 → 2015-10-07 (+21d) | 2015-09-16 → 2015-10-07 (+21d) |  |  |  |  |  |
| 20 | Create Web Page | 2015-09-23 → 2015-09-21 (-2d) |  | 8d → 10d |  |  |  |  |
| 21 | **RTL Design and Testing** |  |  |  | 2% → 7% |  |  | was named RTL Design |
| 22 | **Create i2si.v** |  |  |  | 10% → 23% |  |  |  |
| 23 | Create and Test i2si_fifo.v |  | 2015-09-18 A |  | 70% → 100% |  |  | was named Create i2si_fifo.v |
| 24 | Create and Test i2si_deserializer.v | 2015-09-16 A |  |  | 0% → 25% |  |  | was named Create i2si_deserializer.v; resources Kevin Cao; Zach Nelson → Kevin Cao |
| 25 | Create and Test i2si_bist.v | 2015-09-23 → 2015-09-16 A (-7d) | 2015-10-14 → 2015-09-30 (-14d) | 16d → 11d | 0% → 15% |  |  | was named Create i2si_bist.v; resources Kevin Cao → Zach Nelson |
| 26 | Create i2si.v Top-Level | 2015-10-15 → 2015-10-05 (-10d) | 2015-10-31 → 2015-10-21 (-10d) |  |  |  |  | resources Kevin Cao → Kevin Cao; Zach Nelson |
| 29 | Create and Test i2so_fifo.v |  |  |  |  |  |  | was named Create i2so_fifo.v |
| 30 | Create and Test i2so_serializer.v |  |  |  |  |  |  | was named Create i2so_serializer.v; resources Kevin Cao; Zach Nelson → Kevin Cao |
| 31 | Create i2so.v Top-Level |  | 2015-10-24 → 2015-10-21 (-3d) | 13d → 10d |  |  |  | resources Kevin Cao → Kevin Cao; Zach Nelson |
| 33 | **Create filter.v** | 2015-09-10 → 2015-09-11 (+1d) |  |  | 0% → 20% | 0d → none |  |  |
| 34 | Create and Test filter_convolution.v | 2015-09-10 → 2015-09-14 (+4d) | 2015-09-23 → 2015-09-28 (+5d) | 10d → 11d |  |  |  | was named Creater filter_convolution.v |
| 35 | Create and Test filter_accumulator.v | 2015-09-16 → 2015-09-18 (+2d) | 2015-09-30 → 2015-10-02 (+2d) |  |  |  |  | was named Create filter_accumulator.v |
| 36 | Create and Test filter_fifo.v | 2015-09-23 A | 2015-10-07 A |  | 0% → 100% |  |  | was named Create filter_fifo.v |
| 37 | Create and Test filter_round_shift_clip.v | 2015-09-30 → 2015-10-02 (+2d) | 2015-10-14 → 2015-10-16 (+2d) |  |  |  |  | was named Creater filter_round_shift_clip.v |
| 38 | Create filter.v Top-Level | 2015-10-15 → 2015-10-17 (+2d) | 2015-10-31 → 2015-10-21 (-10d) | 13d → 4d |  |  |  |  |
| 41 | Create and Test register_trig_gen.v |  | 2015-09-30 → 2015-10-14 (+14d) | 15d → 25d |  |  |  | was named Create register_trig_gen.v |
| 42 | Create register.v Top-Level | 2015-10-01 → 2015-09-10 (-21d) | 2015-10-30 → 2015-10-14 (-16d) | 22d → 25d |  |  | 41 → none |  |
| 45 | Create and Test i2c_slave_deserializer.v |  |  |  |  |  |  | was named Create i2c_slave_deserializer.v |
| 46 | Create and Test i2c_slave_serializer.v |  |  |  |  |  |  | was named Create i2c_slave_serializer.v |
| 47 | Create and Test i2c_slave.v Buffer |  |  |  |  |  |  | was named Create i2c_slave.v Buffer |
| 48 | Create and Test i2c_slave.v Write to Register |  |  |  |  |  |  | was named Create i2c_slave.v Write to Register |
| 49 | Create and Test i2c_slave.v Read from Register |  |  |  |  |  |  | was named Create i2c_slave.v Read from Register |
| 50 | Create and Test i2c_slave.v Top-Level |  |  |  |  |  |  | was named Create i2c_slave.v Top-Level |
| 52 | Finish RTL Design | 2015-10-31 → 2015-10-30 (-1d) | 2015-10-31 → 2015-10-30 (-1d) |  |  |  |  |  |

## Version 3 (saved 2015-09-23)

Note of the change: Reorganized Docs Folder and Added Calendar

Last finish stays 2016-05-06.

Added:

| ID | Task | Duration | Start | Finish | Constraint | Resources |
| --- | --- | --- | --- | --- | --- | --- |
| 46 | Create and Test i2c_slave_sequencer.v | 20d | 2015-09-17 | 2015-10-14 | as late as possible | Whitley Forman |

Removed: 48 Create and Test i2c_slave.v Write to Register; 62 Link Board and FPGA

Changed:

| ID | Task | Start | Finish | Duration | Complete | Predecessors | Other |
| --- | --- | --- | --- | --- | --- | --- | --- |
| 13 | **Install EDA Tools** |  | 2015-09-16 → 2015-10-07 (+21d) | 11d → 26d | 27% → 26% |  |  |
| 15 | Install OS |  | 2015-09-23 → 2015-09-25 (+2d) | 11d → 13d | 25% → 21% |  |  |
| 16 | Install EDA Tool | 2015-09-24 → 2015-09-28 (+4d) | 2015-09-28 → 2015-09-29 (+1d) | 3d → 2d |  |  |  |
| 45 | Create and Test i2c_slave_deserializer.v |  | 2015-09-23 → 2015-09-30 (+7d) | 10d → 15d |  |  |  |
| 47 | Create and Test i2c_slave_writetoreg.v | 2015-09-23 → 2015-09-17 (-6d) | 2015-10-07 → 2015-10-14 (+7d) | 11d → 20d |  |  | was named Create and Test i2c_slave.v Buffer |
| 48 | Create and Test i2c_slave_serializer.v | 2015-09-16 → 2015-10-08 (+22d) | 2015-09-30 → 2015-10-21 (+21d) | 11d → 10d |  |  |  |
| 49 | Create i2c_slave.v Top Level | 2015-10-07 → 2015-10-14 (+7d) | 2015-10-21 → 2015-10-26 (+5d) | 11d → 9d |  |  | was named Create and Test i2c_slave.v Read from Register |
| 50 | Test i2c_slave.v | 2015-10-22 → 2015-10-27 (+5d) | 2015-10-30 → 2015-10-31 (+1d) | 7d → 5d |  | 45, 48, 47, Create and Test i2c_slave.v Write to Register, 49 → 48, 49 | was named Create and Test i2c_slave.v Top-Level |

## Version 4 (saved 2015-10-04)

Note of the change: Updated Docs for Presentation

Last finish stays 2016-05-06. Complete tasks 13 → 17.

Changed:

| ID | Task | Start | Finish | Complete |
| --- | --- | --- | --- | --- |
| 1 | **System Design** |  |  | 99% → 100% |
| 10 | RTS/RTR and XFC Protocols |  | 2015-09-16 A | 70% → 100% |
| 13 | **Install EDA Tools** |  |  | 26% → 65% |
| 15 | Install OS |  | 2015-09-25 A | 21% → 100% |
| 21 | **RTL Design and Testing** |  |  | 7% → 20% |
| 22 | **Create i2si.v** |  |  | 23% → 42% |
| 25 | Create and Test i2si_bist.v |  | 2015-09-30 A | 15% → 100% |
| 28 | **Create i2so.v** | 2015-09-10 A |  | 0% → 23% |
| 29 | Create and Test i2so_fifo.v | 2015-09-10 A | 2015-09-23 A | 0% → 100% |
| 33 | **Create filter.v** |  |  | 20% → 39% |
| 34 | Create and Test filter_convolution.v | 2015-09-14 A |  | 0% → 50% |
| 35 | Create and Test filter_accumulator.v | 2015-09-18 A |  | 0% → 50% |
| 44 | **Create i2c_slave.v** | 2015-09-10 A |  | 0% → 14% |
| 45 | Create and Test i2c_slave_deserializer.v | 2015-09-10 A |  | 0% → 75% |

## Version 5 (saved 2015-10-14)

Note of the change: Updated Schedule

Last finish stays 2016-05-06. Complete tasks 17 → 18.

Changed:

| ID | Task | Start | Finish | Complete |
| --- | --- | --- | --- | --- |
| 20 | Create Web Page | 2015-09-21 A | 2015-10-02 A | 0% → 100% |
| 21 | **RTL Design and Testing** |  |  | 20% → 22% |
| 22 | **Create i2si.v** |  |  | 42% → 59% |
| 24 | Create and Test i2si_deserializer.v |  |  | 25% → 75% |
| 26 | Create i2si.v Top-Level | 2015-10-05 A |  | 0% → 25% |

## Version 6 (saved 2015-11-16)

Note of the change: Updated Documents

Last finish stays 2016-05-06. Complete tasks 18 → 21.

Changed:

| ID | Task | Start | Finish | Complete |
| --- | --- | --- | --- | --- |
| 21 | **RTL Design and Testing** |  |  | 22% → 58% |
| 22 | **Create i2si.v** |  |  | 59% → 92% |
| 24 | Create and Test i2si_deserializer.v |  | 2015-09-30 A | 75% → 100% |
| 26 | Create i2si.v Top-Level |  | 2015-10-21 A | 25% → 100% |
| 27 | Test i2si.v | 2015-10-22 A |  | 0% → 50% |
| 28 | **Create i2so.v** |  |  | 23% → 67% |
| 30 | Create and Test i2so_serializer.v | 2015-09-16 A |  | 0% → 75% |
| 31 | Create i2so.v Top-Level | 2015-10-08 A |  | 0% → 75% |
| 33 | **Create filter.v** |  |  | 39% → 50% |
| 34 | Create and Test filter_convolution.v |  |  | 50% → 75% |
| 36 | Create and Test filter_fifo.v |  | 2015-10-07 A → 2015-10-07 | 100% → 50% |
| 37 | Create and Test filter_round_shift_clip.v | 2015-10-02 A |  | 0% → 50% |
| 38 | Create filter.v Top-Level | 2015-10-17 A |  | 0% → 75% |
| 40 | **Create register.v** | 2015-09-10 A |  | 0% → 50% |
| 41 | Create and Test register_trig_gen.v | 2015-09-10 A | 2015-10-14 A | 0% → 100% |
| 42 | Create register.v Top-Level | 2015-09-10 A |  | 0% → 25% |
| 44 | **Create i2c_slave.v** |  |  | 14% → 47% |
| 45 | Create and Test i2c_slave_deserializer.v |  |  | 75% → 50% |
| 46 | Create and Test i2c_slave_sequencer.v | 2015-09-17 A |  | 0% → 50% |
| 47 | Create and Test i2c_slave_writetoreg.v | 2015-09-17 A |  | 0% → 50% |
| 48 | Create and Test i2c_slave_serializer.v | 2015-10-08 A |  | 0% → 50% |
| 49 | Create i2c_slave.v Top Level | 2015-10-14 A |  | 0% → 50% |
| 51 | Create chip.v | 2015-09-16 A |  | 0% → 50% |
| 63 | Write Final Report and Presentation | 2015-11-26 A | 2015-12-02 A | 0% → 100% |

## Version 7 (saved 2015-11-21)

Note of the change: Updated Gantt Chart for Presentation

Last finish 2016-05-06 → 2016-05-04 (-2d).

Added:

| ID | Task | Duration | Start | Finish | Predecessors | Constraint | Resources |
| --- | --- | --- | --- | --- | --- | --- | --- |
| 64 | PSoC for I2S Stream | 51d | 2015-11-18 | 2016-01-27 |  | as late as possible | Ian Patel |
| 66 | Prepare for Fabrication | 28d | 2016-01-21 | 2016-02-29 |  | as late as possible |  |
| 68 | Additional FPGA Testing | 33d | 2016-03-07 | 2016-04-20 |  | as late as possible |  |
| 69 | Final Documentation | 9d | 2016-04-21 | 2016-05-03 | 68 | as late as possible |  |
| 70 | Final Presentation and Report II | 0d | 2016-05-04 | 2016-05-04 |  | as late as possible |  |

Changed:

| ID | Task | Start | Finish | Duration | Other |
| --- | --- | --- | --- | --- | --- |
| 65 | Verification | 2016-05-06 → 2016-01-20 (-107d) | 2016-05-06 → 2016-02-29 (-67d) | 1d → 29d | constraint finish no earlier than 2015-05-14 → finish no later than 2016-02-29 |
