# Chip Design

How a schedule from MS Project changed from version to version. A marks actual dates.

## Version 1 (saved 2015-12-04)

Note of the change: Reorganized Documents Folder

| ID | WBS | Task | Duration | Start | Finish | Predecessors | Complete | Constraint |
| --- | --- | --- | --- | --- | --- | --- | --- | --- |
| 1 | 1 | **System Design** | 88d | 2015-05-14 A | 2015-09-14 |  | 100% | as late as possible |
| 2 |  | General Planning | 26d | 2015-05-14 A | 2015-06-18 A |  | 100% |  |
| 3 |  | Complete I2S In Document | 60d | 2015-06-18 A | 2015-09-09 A |  | 100% |  |
| 4 |  | Complete I2S Out Document | 44d | 2015-07-11 A | 2015-09-09 A |  | 100% |  |
| 5 |  | Complete Filter Document | 60d | 2015-06-18 A | 2015-09-09 A |  | 100% |  |
| 6 |  | Complete I2C Document | 60d | 2015-06-18 A | 2015-09-09 A |  | 100% |  |
| 7 |  | Complete Register Document | 60d | 2015-06-18 A | 2015-09-09 A |  | 100% |  |
| 8 |  | Finish System Design | 0d | 2015-09-09 A | 2015-09-09 A |  | 100% |  |
| 9 |  | Document System in CORE | 60d | 2015-06-18 A | 2015-09-09 A |  | 100% |  |
| 10 |  | RTS/RTR and XFC Protocols | 7d | 2015-09-08 A | 2015-09-16 A |  | 100% | as late as possible |
| 11 |  | Create a Detailed Schedule | 9d | 2015-09-02 A | 2015-09-14 A |  | 100% |  |
| 12 |  | Install Microsoft Project | 9d | 2015-09-02 A | 2015-09-14 A |  | 100% | as late as possible |
| 13 | 4 | **Install EDA Tools** | 26d | 2015-09-02 A | 2015-10-07 |  | 50% | as late as possible |
| 14 |  | Determine EDA Requriments | 4d | 2015-09-02 A | 2015-09-06 A |  | 100% |  |
| 15 |  | Install OS | 13d | 2015-09-09 A | 2015-09-25 | 14 | 69% |  |
| 16 |  | Install EDA Tool | 2d | 2015-09-28 | 2015-09-29 | 15 |  |  |
| 17 |  | Create a Simple Test Case | 5d | 2015-09-29 | 2015-10-05 | 16 |  |  |
| 18 |  | Place and Route Test | 2d | 2015-10-06 | 2015-10-07 | 17 |  |  |
| 19 |  | Finish EDA Installation | 0d | 2015-10-07 | 2015-10-07 |  |  |  |
| 20 |  | Create Web Page | 10d | 2015-09-21 A | 2015-10-02 A |  | 100% | as late as possible |
| 21 | 6 | **RTL Design and Testing** | 38d | 2015-09-10 A | 2015-10-31 | 1 | 70% | as late as possible |
| 22 | 6.1 | **Create i2si.v** | 38d | 2015-09-10 A | 2015-10-31 |  | 71% | as late as possible |
| 23 |  | Create and Test i2si_fifo.v | 7d | 2015-09-10 A | 2015-09-18 A |  | 100% |  |
| 24 |  | Create and Test i2si_deserializer.v | 11d | 2015-09-16 A | 2015-09-30 A |  | 100% |  |
| 25 |  | Create and Test i2si_bist.v | 11d | 2015-09-16 A | 2015-09-30 A |  | 100% |  |
| 26 |  | Create i2si.v Top-Level | 13d | 2015-10-05 A | 2015-10-21 | 23, 24, 25 | 50% | as late as possible |
| 27 |  | Test i2si.v | 8d | 2015-10-22 | 2015-10-31 | 26 |  | as late as possible |
| 28 | 6.2 | **Create i2so.v** | 33d | 2015-09-10 A | 2015-10-24 |  | 67% | as late as possible |
| 29 |  | Create and Test i2so_fifo.v | 10d | 2015-09-10 A | 2015-09-23 A |  | 100% |  |
| 30 |  | Create and Test i2so_serializer.v | 16d | 2015-09-16 A | 2015-10-07 A |  | 100% | finish no later than 2015-10-07 |
| 31 |  | Create i2so.v Top-Level | 10d | 2015-10-08 A | 2015-10-27 | 29, 30 | 35% | as late as possible |
| 32 |  | Test i2so.v | 8d | 2015-10-22 | 2015-10-31 | 31 |  | as late as possible |
| 33 | 6.3 | **Create filter.v** | 37d | 2015-09-11 | 2015-10-31 |  | 72% | as late as possible |
| 34 |  | Create and Test filter_convolution.v | 11d | 2015-09-14 A | 2015-09-28 A |  | 100% | as late as possible |
| 35 |  | Create and Test filter_accumulator.v | 11d | 2015-09-18 A | 2015-10-02 A |  | 100% | as late as possible |
| 36 |  | Create and Test filter_fifo.v | 11d | 2015-09-23 A | 2015-10-07 A |  | 100% | as late as possible |
| 37 |  | Create and Test filter_round_shift_clip.v | 11d | 2015-10-02 A | 2015-10-16 |  | 68% | as late as possible |
| 38 |  | Create filter.v Top-Level | 4d | 2015-10-17 | 2015-10-21 | 34, 35, 36, 37 |  | as late as possible |
| 39 |  | Test filter.v | 8d | 2015-10-22 | 2015-10-31 |  |  | as late as possible |
| 40 | 6.4 | **Create register.v** | 37d | 2015-09-10 A | 2015-10-30 |  | 75% | as late as possible |
| 41 |  | Create and Test register_trig_gen.v | 25d | 2015-09-10 A | 2015-10-14 |  | 94% | as late as possible |
| 42 |  | Create register.v Top-Level | 25d | 2015-09-10 A | 2015-10-14 |  | 94% | as late as possible |
| 43 |  | Test register.v | 13d | 2015-10-15 | 2015-10-31 |  |  | as late as possible |
| 44 | 6.5 | **Create i2c_slave.v** | 37d | 2015-09-10 A | 2015-10-30 |  | 70% | as late as possible |
| 45 |  | Create and Test i2c_slave_deserializer.v | 15d | 2015-09-10 A | 2015-09-30 A |  | 100% | as late as possible |
| 46 |  | Create and Test i2c_slave_sequencer.v | 20d | 2015-09-17 A | 2015-10-14 |  | 93% | as late as possible |
| 47 |  | Create and Test i2c_slave_writetoreg.v | 20d | 2015-09-17 A | 2015-10-14 |  | 93% | as late as possible |
| 48 |  | Create and Test i2c_slave_serializer.v | 10d | 2015-10-08 A | 2015-10-23 |  | 35% | as late as possible |
| 49 |  | Create i2c_slave.v Top Level | 9d | 2015-10-14 | 2015-10-26 |  |  | as late as possible |
| 50 |  | Test i2c_slave.v | 5d | 2015-10-27 | 2015-10-31 | 48, 49 |  | as late as possible |
| 51 |  | Create chip.v | 33d | 2015-09-16 A | 2015-10-30 |  | 59% |  |
| 52 |  | Finish RTL Design | 0d | 2015-10-30 | 2015-10-30 |  |  |  |
| 53 |  | Create Text Fixtures | 23d | 2015-09-30 A | 2015-10-30 |  | 20% | as late as possible |
| 54 |  | Integration Testing | 8d | 2015-11-01 A | 2015-11-10 | 52 | 10% | as late as possible |
| 55 |  | Logic Synthesis | 8d | 2015-11-01 A | 2015-11-10 | 21 | 10% | finish no later than 2015-11-10 |
| 56 |  | Floor Planning | 6d | 2015-11-11 | 2015-11-18 | 55 |  | as late as possible |
| 57 |  | Place and Route Gates | 5d | 2015-11-19 | 2015-11-25 | 56 |  | finish no later than 2015-11-25 |
| 58 | 12 | **Board Design** | 26d | 2015-10-21 | 2015-11-25 |  |  | as late as possible |
| 59 |  | Research FPGA's | 5d | 2015-10-21 | 2015-10-27 |  |  | as late as possible |
| 60 |  | Purchase FPGA | 2d | 2015-10-28 | 2015-10-29 | 59 |  |  |
| 61 |  | Write Microcontroller Code | 16d | 2015-10-28 | 2015-11-18 |  |  | as late as possible |
| 62 |  | Have a Functional FPGA | 0d | 2015-12-02 | 2015-12-02 |  |  |  |
| 63 |  | Write Final Report and Presentation | 5d | 2015-11-26 A | 2015-12-02 A |  | 100% | as late as possible |
| 64 |  | PSoC for I2S Stream | 51d | 2015-11-18 A | 2016-01-27 |  | 5% | as late as possible |
| 65 |  | Verification | 29d | 2016-01-20 | 2016-02-29 |  |  | finish no later than 2016-02-29 |
| 66 |  | Prepare for Fabrication | 28d | 2016-01-21 | 2016-02-29 |  |  | as late as possible |
| 67 |  | MOSIS Fabrication Deadline | 0d | 2016-03-06 | 2016-03-06 |  |  | as late as possible |
| 68 |  | Additional FPGA Testing | 33d | 2016-03-07 | 2016-04-20 |  |  | as late as possible |
| 69 |  | Final Documentation | 9d | 2016-04-21 | 2016-05-03 | 68 |  | as late as possible |
| 70 |  | Final Presentation and Report II | 0d | 2016-05-04 | 2016-05-04 |  |  | as late as possible |

## Version 2 (saved 2016-02-06)

Note of the change: Updated Schedule

Last finish stays 2016-05-04. Complete tasks 23 → 44.

Added:

| ID | Task | Duration | Start | Finish | Predecessors | Constraint | Resources |
| --- | --- | --- | --- | --- | --- | --- | --- |
| 13 | **Coding** | 85d | 2015-09-10 A | 2016-01-06 A | 1 | as late as possible | Dhruvit Naik; Julie Swift; Kevin Cao; Whitley Forman; Zach Nelson |
| 49 | Install Libraries | 12d | 2016-01-26 A | 2016-02-10 |  | as late as possible |  |
| 52 | Test i2s_in.v | 31d | 2015-12-09 A | 2016-01-20 |  | as late as possible |  |
| 53 | Test i2s_out.v | 31d | 2015-12-09 A | 2016-01-20 |  | as late as possible |  |
| 54 | Test filter.v | 31d | 2015-12-09 A | 2016-01-20 |  | as late as possible |  |
| 55 | Test chip_reg.v | 31d | 2015-12-09 A | 2016-01-20 |  | as late as possible |  |
| 56 | Test i2c.v | 31d | 2015-12-09 A | 2016-01-20 |  | as late as possible |  |
| 57 | Test Control Flow Subsystem | 27d? | 2016-01-26 | 2016-03-02 |  | as late as possible |  |
| 58 | Test Data Flow Subsystem | 27d? | 2016-01-26 | 2016-03-02 |  | as late as possible |  |
| 59 | Test chip.v | 27d? | 2016-01-26 | 2016-03-02 |  | as late as possible |  |
| 61 | Synthesize i2s_in.v | 19d | 2016-01-15 A | 2016-02-10 |  | as late as possible |  |
| 62 | Syntehsize i2s_out.v | 19d | 2016-01-15 A | 2016-02-10 |  | as late as possible |  |
| 63 | Synthesize filter.v | 19d | 2016-01-15 A | 2016-02-10 |  | as late as possible |  |
| 64 | Synthesize chip_reg.v | 19d | 2016-01-15 A | 2016-02-10 |  | as late as possible |  |
| 65 | Synthesize i2c.v | 19d | 2016-01-15 A | 2016-02-10 |  | as late as possible |  |
| 66 | Synthesize chip.v | 32d | 2016-01-26 A | 2016-03-09 |  | as late as possible |  |
| 67 | **FPGA Implementation** | 121d | 2015-10-21 A | 2016-04-06 |  | as late as possible |  |
| 71 | Implement Design on FPGA | 42d? | 2016-01-26 | 2016-03-23 |  | as late as possible |  |
| 72 | Test FPGA | 21d? | 2016-03-09 | 2016-04-06 |  | as late as possible |  |
| 73 | Physical Design | 31d | 2016-03-16 A | 2016-04-27 |  | as late as possible |  |
| 75 | **MOSIS Fabrication** | 44d | 2016-03-06 A | 2016-05-04 |  | as late as possible |  |
| 77 | **Documentation** | 163d | 2015-09-21 A | 2016-05-04 |  | as late as possible |  |
| 80 | TCF Poster | 0d | 2016-03-19 | 2016-03-19 |  | as late as possible |  |

Removed: 18 Place and Route Test; 19 Finish EDA Installation; 21 RTL Design and Testing; 54 Integration Testing; 56 Floor Planning; 58 Board Design; 61 Write Microcontroller Code; 62 Have a Functional FPGA; 65 Verification; 66 Prepare for Fabrication; 68 Additional FPGA Testing; 69 Final Documentation

Changed:

| ID | Task | Start | Finish | Duration | Complete | Predecessors | Other |
| --- | --- | --- | --- | --- | --- | --- | --- |
| 14 | **Create i2si.v** |  | 2015-10-31 A |  | 71% → 100% |  |  |
| 18 | Create i2si.v Top-Level |  | 2015-10-21 A |  | 50% → 100% |  |  |
| 19 | Test i2si.v | 2015-10-22 A | 2015-10-31 A |  | 0% → 100% |  |  |
| 20 | **Create i2so.v** |  |  |  | 67% → 100% |  |  |
| 23 | Create i2so.v Top-Level |  | 2015-10-27 → 2015-10-21 A (-6d) |  | 35% → 100% |  |  |
| 24 | Test i2so.v | 2015-10-22 A | 2015-10-31 A |  | 0% → 100% |  |  |
| 25 | **Create filter.v** | 2015-09-11 A | 2015-10-31 A |  | 72% → 100% |  |  |
| 29 | Create and Test filter_round_shift_clip.v |  | 2015-10-16 A |  | 68% → 100% |  |  |
| 30 | Create filter.v Top-Level | 2015-10-17 A | 2015-10-21 A |  | 0% → 100% |  |  |
| 31 | Test filter.v | 2015-10-22 A | 2015-10-31 A |  | 0% → 100% |  |  |
| 32 | **Create register.v** |  |  |  | 75% → 100% |  |  |
| 33 | Create and Test register_trig_gen.v |  | 2015-10-14 A |  | 94% → 100% |  |  |
| 34 | Create register.v Top-Level |  | 2015-10-14 A |  | 94% → 100% |  |  |
| 35 | Test register.v | 2015-10-15 A | 2015-10-31 → 2016-01-06 A (+67d) | 13d → 60d | 0% → 100% |  |  |
| 36 | **Create i2c_slave.v** |  |  |  | 70% → 100% |  |  |
| 38 | Create and Test i2c_slave_sequencer.v |  | 2015-10-14 A |  | 93% → 100% |  |  |
| 39 | Create and Test i2c_slave_writetoreg.v |  | 2015-10-14 A |  | 93% → 100% |  |  |
| 40 | Create and Test i2c_slave_serializer.v |  | 2015-10-23 → 2015-10-21 A (-2d) |  | 35% → 100% |  |  |
| 41 | Create i2c_slave.v Top Level | 2015-10-14 A | 2015-10-26 A |  | 0% → 100% |  |  |
| 42 | Test i2c_slave.v | 2015-10-27 A | 2015-10-31 A |  | 0% → 100% | 40, 41 → none |  |
| 43 | Create chip.v |  | 2015-10-30 A |  | 59% → 100% |  |  |
| 44 | Finish RTL Design | 2015-10-30 A | 2015-10-30 A |  | 0% → 100% |  |  |
| 45 | **Install EDA Tools** |  | 2015-10-07 → 2016-02-10 (+126d) | 26d → 116d | 50% → 90% |  |  |
| 47 | Install OS |  | 2015-09-25 A |  | 69% → 100% |  |  |
| 48 | Install EDA Tool | 2015-09-28 A | 2015-09-29 A |  | 0% → 100% |  |  |
| 50 | Create a Simple Test Case | 2015-09-29 A | 2015-10-05 A |  | 0% → 100% |  |  |
| 51 | **Simulation/Verification** | 2015-09-30 A → 2015-12-09 A (+70d) | 2015-10-30 → 2016-03-02 (+124d) | 23d → 61d | 20% → 50% |  | was named Create Text Fixtures |
| 60 | **Synthesis** | 2015-11-01 A → 2016-01-15 A (+75d) | 2015-11-10 → 2016-03-09 (+120d) | 8d → 39d | 10% → 70% | RTL Design and Testing → none | was named Logic Synthesis; constraint finish no later than 2015-11-10 → as late as possible |
| 68 | Research FPGA's | 2015-10-21 A | 2015-10-27 A |  | 0% → 100% |  |  |
| 69 | Purchase FPGA | 2015-10-28 A | 2015-10-29 A |  | 0% → 100% |  |  |
| 70 | PSoC for I2S Stream |  |  |  | 5% → 34% |  |  |
| 74 | Place and Route Gates | 2015-11-19 → 2016-03-23 (+125d) | 2015-11-25 → 2016-04-13 (+140d) | 5d → 16d |  | Floor Planning → none | constraint finish no later than 2015-11-25 → finish no later than 2016-04-13 |
| 76 | MOSIS Fabrication Deadline | 2016-03-06 A | 2016-03-06 → 2016-05-04 (+59d) | 0d → 44d | 0% → 10% |  |  |
| 79 | Write Final Report and Presentation |  | 2015-12-02 A → 2015-12-07 (+5d) |  | 100% → 25% |  |  |

## Version 3 (saved 2016-02-10)

Note of the change: Added Meeting Minutes and Updated Schedule

Last finish stays 2016-05-04.

Changed:

| ID | Task | Start | Complete | Other |
| --- | --- | --- | --- | --- |
| 13 | **Verilog RTL Coding** |  |  | was named Coding |
| 73 | Physical Design |  | 10% → 0% |  |
| 75 | **Database for MOSIS** | 2016-03-06 A → 2016-03-06 | 10% → 0% | was named MOSIS Fabrication |
| 76 | MOSIS Fabrication Deadline | 2016-03-06 A → 2016-03-06 | 10% → 0% |  |

## Version 4 (saved 2016-02-29)

Note of the change: More Updates

Last finish stays 2016-05-04. Complete tasks 44 → 56.

Changed:

| ID | Task | Start | Finish | Duration | Complete |
| --- | --- | --- | --- | --- | --- |
| 51 | **Simulation/Verification** |  |  |  | 50% → 94% |
| 52 | Test i2s_in.v |  | 2016-01-20 A |  | 76% → 100% |
| 53 | Test i2s_out.v |  | 2016-01-20 A |  | 76% → 100% |
| 54 | Test filter.v |  | 2016-01-20 A |  | 76% → 100% |
| 55 | Test chip_reg.v |  | 2016-01-20 A |  | 76% → 100% |
| 56 | Test i2c.v |  | 2016-01-20 A |  | 76% → 100% |
| 57 | Test Control Flow Subsystem |  | 2016-03-02 A | 27d? → 27d | 0% → 100% |
| 58 | Test Data Flow Subsystem |  | 2016-03-02 A | 27d? → 27d | 0% → 100% |
| 59 | Test chip.v |  |  |  | 0% → 50% |
| 60 | **Synthesis** |  |  |  | 70% → 94% |
| 61 | Synthesize i2s_in.v |  | 2016-02-10 A |  | 84% → 100% |
| 62 | Syntehsize i2s_out.v |  | 2016-02-10 A |  | 84% → 100% |
| 63 | Synthesize filter.v |  | 2016-02-10 A |  | 84% → 100% |
| 64 | Synthesize chip_reg.v |  | 2016-02-10 A |  | 84% → 100% |
| 65 | Synthesize i2c.v |  | 2016-02-10 A |  | 84% → 100% |
| 66 | Synthesize chip.v |  |  |  | 28% → 75% |
| 67 | **FPGA Implementation** |  |  |  | 20% → 36% |
| 70 | PSoC for I2S Stream |  |  |  | 34% → 50% |
| 71 | Implement Design on FPGA | 2016-01-26 A |  |  | 0% → 25% |
| 75 | **Database for MOSIS** | 2016-03-06 A |  |  |  |

## Version 5 (saved 2016-05-03)

Note of the change: Merged Draft Report

Last finish stays 2016-05-04. Complete tasks 56 → 67.

Removed: 74 Place and Route Gates

Changed:

| ID | Task | Start | Finish | Duration | Complete | Total float |
| --- | --- | --- | --- | --- | --- | --- |
| 45 | **Install EDA Tools** |  | 2016-02-10 A |  | 90% → 100% |  |
| 49 | Install Libraries |  | 2016-02-10 A |  | 70% → 100% |  |
| 51 | **Simulation/Verification** |  | 2016-03-02 A |  | 94% → 100% |  |
| 57 | Test Control Flow Subsystem | 2016-01-26 A |  |  |  |  |
| 58 | Test Data Flow Subsystem | 2016-01-26 A |  |  |  |  |
| 59 | Test chip.v | 2016-01-26 A | 2016-03-02 A | 27d? → 27d | 50% → 100% |  |
| 60 | **Synthesis** |  | 2016-03-09 A |  | 94% → 100% |  |
| 66 | Synthesize chip.v |  | 2016-03-09 A |  | 75% → 100% |  |
| 67 | **FPGA Implementation** |  | 2016-04-06 A |  | 36% → 100% |  |
| 70 | PSoC for I2S Stream |  | 2016-01-27 A |  | 50% → 100% |  |
| 71 | Implement Design on FPGA |  | 2016-03-23 A | 42d? → 42d | 25% → 100% |  |
| 72 | Test FPGA | 2016-03-09 A | 2016-04-06 A | 21d? → 21d | 0% → 100% |  |
| 73 | Physical Design |  | 2016-04-27 A |  | 0% → 100% |  |
| 74 | **Database for MOSIS** |  | 2016-05-04 A |  | 0% → 100% |  |
| 75 | MOSIS Fabrication Deadline | 2016-03-06 A | 2016-05-04 A |  | 0% → 100% |  |
| 76 | **Documentation** |  | 2016-05-04 A |  | 75% → 100% | 0d → none |
| 78 | Write Final Report and Presentation |  | 2015-12-07 → 2015-12-02 A (-5d) |  | 25% → 100% |  |
| 79 | TCF Poster | 2016-03-19 A | 2016-03-19 A |  | 0% → 100% |  |
| 80 | Final Presentation and Report II | 2016-05-04 A | 2016-05-04 A |  | 0% → 100% |  |
